# 福莱特自研MES项目-南通推广

Schedule from a web Gantt chart, 2026-08-03 to 2026-10-23.
Saturdays and Sundays are off

## Schedule

| ID | WBS | Task | Duration | Start | Finish | Predecessors | Complete | Status |
| --- | --- | --- | --- | --- | --- | --- | --- | --- |
| 2 | 1 | 项目启动会 | 1d | 2026-08-03 | 2026-08-03 |  | 100% | done |
| 3 | 2 | **培训** | 10d | 2026-08-17 | 2026-08-28 |  |  | waiting |
| 4 | 2.1 | 培训材料编写 | 5d | 2026-08-17 | 2026-08-21 |  |  | waiting |
| 5 | 2.2 | 系统动员会 | 1d | 2026-08-21 | 2026-08-21 |  |  | waiting |
| 6 | 2.3 | 系统培训 | 5d | 2026-08-24 | 2026-08-28 |  |  | waiting |
| 7 | 3 | **系统试运行** | 20d | 2026-08-17 | 2026-09-11 |  |  | waiting |
| 8 | 3.1 | 现场设备硬件确认 | 5d | 2026-08-24 | 2026-08-28 |  |  | waiting |
| 9 | 3.2 | 试运行环境搭建 | 5d | 2026-08-17 | 2026-08-21 |  |  | waiting |
| 10 | 3.3 | 试运行数据准备 | 10d | 2026-08-17 | 2026-08-28 |  |  | waiting |
| 11 | 3.4 | 系统试运行 | 10d | 2026-08-31 | 2026-09-11 |  |  | waiting |
| 12 | 3.5 | 功能优化 | 10d | 2026-08-31 | 2026-09-11 |  |  | waiting |
| 13 | 4 | **系统上线** | 40d | 2026-08-31 | 2026-10-23 |  |  | waiting |
| 14 | 4.1 | 正式环境部署 | 5d | 2026-08-31 | 2026-09-04 |  |  | waiting |
| 15 | 4.2 | 正式环境数据准备 | 5d | 2026-09-07 | 2026-09-11 | 14 |  | waiting |
| 16 | 4.3 | 正式上线 | 15d | 2026-09-14 | 2026-10-02 | 11 |  | waiting |
| 17 | 4.4 | 验收签字 | 15d | 2026-10-05 | 2026-10-23 | 16 |  | waiting |
